# Autonomous Mobile Manipulator

Schedule from GanttProject, 2018-01-31 to 2018-04-21.
Holidays every year on 01-01, 12-25, 12-26

## Calendars

- Project calendar: Mon-Sat working; Sun off.

## Resources

| Resource |
| --- |
| Tom |
| Dan |
| PCB production by the university |
| Part ordering |
| 3d print |

## Schedule

| ID | WBS | Task | Type | Duration | Start | Finish | Predecessors | Resources |
| --- | --- | --- | --- | --- | --- | --- | --- | --- |
| 1 | 1 | **Gripper** |  | 19d | 2018-02-01 | 2018-02-22 |  |  |
| 2 | 1.1 | Find suitable servos |  | 1d | 2018-02-01 | 2018-02-01 |  | Tom; Dan |
| 3 | 1.2 | **Mechanics** |  | 5d | 2018-02-07 | 2018-02-12 |  |  |
| 4 | 1.2.1 | **CAD** |  | 3d | 2018-02-07 | 2018-02-09 |  |  |
| 5 | 1.2.1.1 | Integrate LEDs |  | 1d | 2018-02-07 | 2018-02-07 |  | Dan |
| 6 | 1.2.1.2 | Integrate camera |  | 1d | 2018-02-07 | 2018-02-07 |  | Dan |
| 7 | 1.2.1.3 | Integrate PCB |  | 1d | 2018-02-07 | 2018-02-07 |  | Dan |
| 8 | 1.2.1.4 | Finish gripper CAD |  | 2d | 2018-02-08 | 2018-02-09 | 2, 5, 6, 7 | Dan |
| 9 | 1.2.2 | **CAM** |  | 2d | 2018-02-10 | 2018-02-12 |  |  |
| 10 | 1.2.2.1 | 3D print gripper |  | 2d | 2018-02-10 | 2018-02-12 | 8 | 3d print |
| 11 | 1.3 | **Electronics** |  | 17d | 2018-02-02 | 2018-02-21 |  |  |
| 12 | 1.3.1 | **Schematics** |  | 1d | 2018-02-02 | 2018-02-02 |  |  |
| 13 | 1.3.1.1 | LED driver and servo breakout |  | 1d | 2018-02-02 | 2018-02-02 |  | Tom |
| 14 | 1.3.2 | PCB layout |  | 1d | 2018-02-03 | 2018-02-03 | 12 | Tom |
| 15 | 1.3.3 | Get PCB made |  | 14d | 2018-02-05 | 2018-02-20 | 14 | PCB production by the university |
| 16 | 1.3.4 | Gripper PCB assembly |  | 1d | 2018-02-21 | 2018-02-21 | 15 | Tom |
| 17 | 1.4 | Assemble gripper |  | 1d | 2018-02-14 | 2018-02-14 | 10 | Dan |
| 18 | 1.5 | Gripper control software |  | 1d | 2018-02-10 | 2018-02-10 | 8 | Dan |
| 19 | 1.6 | Gripper testing |  | 1d | 2018-02-22 | 2018-02-22 | 3, 11, 17, 18 | Dan |
| 20 | 1.7 | Gripper Finished | milestone | 0d | 2018-02-23 | 2018-02-23 | 19 |  |
| 21 | 2 | **Vision** |  | 36d | 2018-01-31 | 2018-03-13 |  |  |
| 22 | 2.1 | Get data on QR codes distance vs resolution vs size |  | 1d | 2018-01-31 | 2018-01-31 |  | Tom; Dan |
| 23 | 2.2 | **Hand cam** |  | 11d | 2018-02-21 | 2018-03-05 |  |  |
| 24 | 2.2.1 | Choose/install fiducial localisation software (hand) |  | 1d | 2018-02-21 | 2018-02-21 | 22 | Tom; Dan |

| ID | WBS | Task | Type | Duration | Start | Finish | Predecessors | Resources |
| --- | --- | --- | --- | --- | --- | --- | --- | --- |
| 25 | 2.2.2 | **Software development** |  | 9d | 2018-02-23 | 2018-03-05 | 24 |  |
| 26 | 2.2.2.1 | **Hand cam node** |  | 8d | 2018-02-23 | 2018-03-03 |  |  |
| 27 | 2.2.2.1.1 | Visual servoing and fiducial tracker |  | 8d | 2018-02-23 | 2018-03-03 |  | Dan |
| 28 | 2.2.2.1.2 | Gripper close trigger when gripper is in the right place |  | 2d | 2018-03-02 | 2018-03-03 | 27FF | Dan |
| 29 | 2.2.2.2 | Test visual servoing and gripper close (not on arm) |  | 1d | 2018-03-05 | 2018-03-05 | 26 | Dan |
| 30 | 2.3 | **Head cam** |  | 15d | 2018-02-24 | 2018-03-13 |  |  |
| 31 | 2.3.1 | Choose/install fiducial localisation software (head) |  | 1d | 2018-02-24 | 2018-02-24 |  | Tom; Dan |
| 32 | 2.3.2 | Develop fiducial system to detect object and point hand cam at it |  | 6d | 2018-03-07 | 2018-03-13 |  | Tom |
| 33 | 2.3.3 | Write node to recieve fiducial detected signal and pass location to waypoint node (Object mapper) |  | 1d | 2018-02-26 | 2018-02-26 | 31 | Tom |
| 34 | 2.3.4 | Test head cam identification and saving with waypoint node |  | 2d | 2018-02-27 | 2018-02-28 | 33, 59 | Tom |
| 35 | 2.3.5 | Headcam can identify, locate and save the location of objects | milestone | 0d | 2018-03-01 | 2018-03-01 | 34 |  |
| 36 | 3 | **Localisation/Navigation** |  | 19d | 2018-02-07 | 2018-02-28 |  |  |
| 37 | 3.1 | Make sure everything still works |  | 1d | 2018-02-07 | 2018-02-07 |  | Tom |
| 38 | 3.2 | Fix encoder |  | 3d | 2018-02-08 | 2018-02-10 | 37 | Tom |
| 39 | 3.3 | Evaluate current performance |  | 3d | 2018-02-12 | 2018-02-14 | 38 | Tom |
| 40 | 3.4 | Go to object identified by object mapper (potentially with variable goal accuracy) | milestone | 0d | 2018-03-01 | 2018-03-01 | 35, 37, 38, 59 |  |
| 41 | 4 | **Arm** |  | 46d | 2018-02-01 | 2018-03-26 |  |  |
| 42 | 4.1 | **Mounting arm on base** |  | 4d | 2018-02-01 | 2018-02-05 |  |  |
| 43 | 4.1.1 | Decide on mounting method for arm |  | 1d | 2018-02-01 | 2018-02-01 |  | Tom; Dan |
| 44 | 4.1.2 | Design arm mount |  | 1d | 2018-02-02 | 2018-02-02 | 43 | Dan |
| 45 | 4.1.3 | Build arm mount |  | 1d | 2018-02-03 | 2018-02-03 | 44 | Dan |
| 46 | 4.1.4 | Mount arm |  | 1d | 2018-02-05 | 2018-02-05 | 45 | Dan |
| 47 | 4.2 | **Mounting gripper on arm** |  | 10d | 2018-02-14 | 2018-02-24 |  |  |
| 48 | 4.2.1 | Design gripper to arm mount |  | 7d | 2018-02-14 | 2018-02-21 |  | Dan |
| 49 | 4.2.2 | Print gripper mount |  | 2d | 2018-02-22 | 2018-02-23 | 48 | 3d print |
| 50 | 4.2.3 | Mount gripper on arm |  | 1d | 2018-02-24 | 2018-02-24 | 49 | Dan |

| ID | WBS | Task | Duration | Start | Finish | Predecessors | Resources |
| --- | --- | --- | --- | --- | --- | --- | --- |
| 51 | 4.3 | **Control** | 22d | 2018-03-01 | 2018-03-26 |  |  |
| 52 | 4.3.1 | Learn how to control arm | 4d | 2018-03-01 | 2018-03-05 |  | Tom |
| 53 | 4.3.2 | **Control node** | 12d | 2018-03-13 | 2018-03-26 |  |  |
| 54 | 4.3.2.1 | Move gripper towards identified object | 4d | 2018-03-13 | 2018-03-16 |  | Tom |
| 55 | 4.3.2.2 | Pass control to hand cam when close | 2d | 2018-03-17 | 2018-03-19 | 29, 54 | Tom |
| 56 | 4.3.2.3 | Once hand cam node reports success, raise object and bring close to robot | 1d | 2018-03-20 | 2018-03-20 | 29, 55 | Tom |
| 57 | 4.3.2.4 | Testing | 5d | 2018-03-21 | 2018-03-26 | 54, 55, 56 |  |
| 58 | 5 | **Other software** | 4d | 2018-02-15 | 2018-02-19 |  |  |
| 59 | 5.1 | Write waypoint node | 4d | 2018-02-15 | 2018-02-19 |  | Tom |
| 60 | 6 | **Systems integration testing** | 41d | 2018-03-06 | 2018-04-21 |  |  |
| 61 | 6.1 | Test base identifying and moving towards objects | 7d | 2018-03-06 | 2018-03-13 |  | Dan |
| 62 | 6.2 | Test base picking up objects | 14d | 2018-03-21 | 2018-04-05 | 56 | Tom; Dan |
| 63 | 6.3 | Test base returning to previously saved waypoint | 6d | 2018-03-14 | 2018-03-20 |  | Dan |
| 64 | 6.4 | Testing of entire system | 14d | 2018-04-06 | 2018-04-21 |  |  |
