ID,Name,Begin date,End date,Duration,Completion,Cost,Coordinator,Predecessors,Outline number,Resources,Web Link,Notes
0,Gripper,08/01/18,27/01/18,18,0,0.0,,,1,,,
28,"  Find suitable servos",08/01/18,08/01/18,1,0,0.0,Tom,,1.1,Tom;Dan,,
27,"  Mechanics",08/01/18,12/01/18,5,0,0.0,Dan,,1.2,Dan,,
7,"    CAD",08/01/18,10/01/18,3,0,0,,,1.2.1,,,
21,"      Integrate camera",08/01/18,08/01/18,1,0,0,,,1.2.1.1,,,
30,"      Integrate LEDs",08/01/18,08/01/18,1,0,0,,,1.2.1.2,,,
29,"      Integrate PCB",08/01/18,08/01/18,1,0,0,,,1.2.1.3,,,
31,"      Finish gripper CAD",09/01/18,10/01/18,2,0,0,,21;28;29;30,1.2.1.4,,,
18,"    CAM",11/01/18,12/01/18,2,0,0,,,1.2.2,,,
32,"      3D print gripper",11/01/18,12/01/18,2,0,0,,31,1.2.2.1,,,
19,"  Electronics",08/01/18,26/01/18,17,0,0.0,Tom,,1.3,Tom,,
22,"    Schematics",08/01/18,08/01/18,1,0,0,,,1.3.1,,,
24,"      LED driver and servo breakout",08/01/18,08/01/18,1,0,0,,,1.3.1.1,,,
23,"    PCB layout",09/01/18,09/01/18,1,0,0,,22,1.3.2,,,
33,"    Get PCB made",10/01/18,25/01/18,14,0,0,,23,1.3.3,,,
26,"    Gripper PCB assembly",26/01/18,26/01/18,1,0,0,,33,1.3.4,,,
34,"  Assemble gripper",13/01/18,13/01/18,1,0,0.0,Dan,32,1.4,Dan,,
42,"  Gripper control software",11/01/18,11/01/18,1,0,0.0,Dan,31,1.5,Dan,,
65,"  Gripper testing",27/01/18,27/01/18,1,0,0.0,Dan,19;27;34;42,1.6,Dan,,
35,Vision,08/01/18,16/01/18,8,0,0.0,,,2,,,
36,"  Get data on QR codes distance vs resolution vs size",08/01/18,08/01/18,1,0,0.0,Tom,,2.1,Tom;Dan,,
1,"  Hand cam",09/01/18,16/01/18,7,0,0.0,,,2.2,,,
47,"    Choose/install fiducial localisation software (hand)",09/01/18,10/01/18,2,0,0.0,Tom,36,2.2.1,Tom;Dan,,
8,"    Software development",11/01/18,16/01/18,5,0,0,,47,2.2.2,,,
48,"      Hand cam node",11/01/18,16/01/18,5,0,0,,,2.2.2.1,,,
49,"        Visual servoing",11/01/18,16/01/18,5,0,0,,36,2.2.2.1.1,,,
50,"        Gripper close trigger when gripper is in the right place",11/01/18,11/01/18,1,0,0,,47,2.2.2.1.2,,,
51,"      Adaptable grip",11/01/18,15/01/18,4,0,0,,,2.2.2.2,,,
2,"  Head cam",11/01/18,13/01/18,3,0,0,,,2.3,,,
9,"    Choose/install fiducial localisation software (head)",11/01/18,12/01/18,2,0,0,,47,2.3.1,,,
44,"    Write node to recieve fiducial detected signal and pass location to waypoint node (Object mapper)",13/01/18,13/01/18,1,0,0,,9,2.3.2,,,
12,Localisation/Navigation,08/01/18,15/01/18,7,0,0,,,3,,,
14,"  Make sure everything still works",08/01/18,08/01/18,1,0,0,,,3.1,,,
57,"  Fix encoder",09/01/18,11/01/18,3,0,0,,14,3.2,,,
56,"  Evaluate current performance",12/01/18,15/01/18,3,0,0,,57,3.3,,,
16,Arm,08/01/18,30/01/18,20,0,0,,,4,,,
54,"  Mounting arm on base",08/01/18,11/01/18,4,0,0,,,4.1,,,
17,"    Decide on mounting method for arm",08/01/18,08/01/18,1,0,0,,,4.1.1,,,
37,"    Design arm mount",09/01/18,09/01/18,1,0,0,,17,4.1.2,,,
113,"    Build arm mount",10/01/18,10/01/18,1,0,0,,37,4.1.3,,,
38,"    Mount arm",11/01/18,11/01/18,1,0,0,,113,4.1.4,,,
80,"  Mounting gripper on arm",08/01/18,11/01/18,4,0,0,,,4.2,,,
81,"    Design gripper to arm mount",08/01/18,08/01/18,1,0,0,,,4.2.1,,,
82,"    Print gripper mount",09/01/18,10/01/18,2,0,0,,81,4.2.2,,,
83,"    Mount gripper on arm",11/01/18,11/01/18,1,0,0,,82,4.2.3,,,
55,"  Control",08/01/18,30/01/18,20,0,0,,,4.3,,,
39,"    Learn how to control arm",08/01/18,10/01/18,3,0,0,,,4.3.1,,,
60,"    Control node",17/01/18,30/01/18,12,0,0,,39,4.3.2,,,
52,"      Move gripper towards identified object",17/01/18,20/01/18,4,0,0,,,4.3.2.1,,,
61,"      Pass control to hand cam when close",22/01/18,23/01/18,2,0,0,,52,4.3.2.2,,,
62,"      Once hand cam node reports success, raise object and bring close to robot",24/01/18,24/01/18,1,0,0,,61,4.3.2.3,,,
63,"      Testing",25/01/18,30/01/18,5,0,0,,52;61;62,4.3.2.4,,,
6,System intergration,08/01/18,08/01/18,1,0,0,,,5,,,
11,"  task_11",08/01/18,08/01/18,1,0,0,,,5.1,,,
40,Other software,08/01/18,12/01/18,5,0,0,,,6,,,
41,"  Write waypoint node",08/01/18,12/01/18,5,0,0,,,6.1,,,
ID,Name,Default role,e-mail,Phone,Assignment role,Standard rate
0,Tom,Default:0,tom.queen@students.plymouth.ac.uk,,,0
1,Dan,Default:0,daniel.gregory-turner@students.plymouth.ac.uk,,,0
