# Autonomous Mobile Manipulator

Schedule from GanttProject, 2018-01-08 to 2018-02-01.
Holidays every year on 01-01, 12-25, 12-26

## Calendars

- Project calendar: Mon-Sat working; Sun off.

## Resources

| Resource |
| --- |
| Tom |
| Dan |

## Schedule

| ID | WBS | Task | Type | Duration | Start | Finish | Predecessors | Resources |
| --- | --- | --- | --- | --- | --- | --- | --- | --- |
| 1 | 1 | **Gripper** |  | 18d | 2018-01-08 | 2018-01-27 |  |  |
| 2 | 1.1 | Find suitable servos |  | 1d | 2018-01-08 | 2018-01-08 |  | Tom; Dan |
| 3 | 1.2 | **Mechanics** |  | 5d | 2018-01-08 | 2018-01-12 |  | Dan |
| 4 | 1.2.1 | **CAD** |  | 3d | 2018-01-08 | 2018-01-10 |  |  |
| 5 | 1.2.1.1 | Integrate camera |  | 1d | 2018-01-08 | 2018-01-08 |  |  |
| 6 | 1.2.1.2 | Integrate LEDs |  | 1d | 2018-01-08 | 2018-01-08 |  |  |
| 7 | 1.2.1.3 | Integrate PCB |  | 1d | 2018-01-08 | 2018-01-08 |  |  |
| 8 | 1.2.1.4 | Finish gripper CAD |  | 2d | 2018-01-09 | 2018-01-10 | 2, 5, 6, 7 |  |
| 9 | 1.2.2 | **CAM** |  | 2d | 2018-01-11 | 2018-01-12 |  |  |
| 10 | 1.2.2.1 | 3D print gripper |  | 2d | 2018-01-11 | 2018-01-12 | 8 |  |
| 11 | 1.3 | **Electronics** |  | 17d | 2018-01-08 | 2018-01-26 |  | Tom |
| 12 | 1.3.1 | **Schematics** |  | 1d | 2018-01-08 | 2018-01-08 |  |  |
| 13 | 1.3.1.1 | LED driver and servo breakout |  | 1d | 2018-01-08 | 2018-01-08 |  |  |
| 14 | 1.3.2 | PCB layout |  | 1d | 2018-01-09 | 2018-01-09 | 12 |  |
| 15 | 1.3.3 | Get PCB made |  | 14d | 2018-01-10 | 2018-01-25 | 14 |  |
| 16 | 1.3.4 | Gripper PCB assembly |  | 1d | 2018-01-26 | 2018-01-26 | 15 |  |
| 17 | 1.4 | Assemble gripper |  | 1d | 2018-01-13 | 2018-01-13 | 10 | Dan |
| 18 | 1.5 | Gripper control software |  | 1d | 2018-01-11 | 2018-01-11 | 8 | Dan |
| 19 | 1.6 | Gripper testing |  | 1d | 2018-01-27 | 2018-01-27 | 3, 11, 17, 18 | Dan |
| 20 | 1.7 | Gripper Finished | milestone | 0d | 2018-01-29 | 2018-01-29 | 19 |  |
| 21 | 2 | **Vision** |  | 9d | 2018-01-08 | 2018-01-17 |  |  |
| 22 | 2.1 | Get data on QR codes distance vs resolution vs size |  | 1d | 2018-01-08 | 2018-01-08 |  | Tom; Dan |
| 23 | 2.2 | **Hand cam** |  | 8d | 2018-01-09 | 2018-01-17 |  |  |
| 24 | 2.2.1 | Choose/install fiducial localisation software (hand) |  | 2d | 2018-01-09 | 2018-01-10 | 22 | Tom; Dan |

| ID | WBS | Task | Type | Duration | Start | Finish | Predecessors |
| --- | --- | --- | --- | --- | --- | --- | --- |
| 25 | 2.2.2 | **Software development** |  | 6d | 2018-01-11 | 2018-01-17 | 24 |
| 26 | 2.2.2.1 | **Hand cam node** |  | 5d | 2018-01-11 | 2018-01-16 |  |
| 27 | 2.2.2.1.1 | Visual servoing |  | 5d | 2018-01-11 | 2018-01-16 | 22 |
| 28 | 2.2.2.1.2 | Gripper close trigger when gripper is in the right place |  | 1d | 2018-01-11 | 2018-01-11 | 24 |
| 29 | 2.2.2.2 | Test visual servoing and gripper close (not on arm) |  | 1d | 2018-01-17 | 2018-01-17 | 26 |
| 30 | 2.2.2.3 | Adaptable grip |  | 4d | 2018-01-11 | 2018-01-15 |  |
| 31 | 2.3 | **Head cam** |  | 5d | 2018-01-11 | 2018-01-16 |  |
| 32 | 2.3.1 | Choose/install fiducial localisation software (head) |  | 2d | 2018-01-11 | 2018-01-12 | 24 |
| 33 | 2.3.2 | Write node to recieve fiducial detected signal and pass location to waypoint node (Object mapper) |  | 1d | 2018-01-13 | 2018-01-13 | 32 |
| 34 | 2.3.3 | Test head cam identification and saving with waypoint node |  | 2d | 2018-01-15 | 2018-01-16 | 33, 61 |
| 35 | 2.3.4 | Headcam can identify, locate and save the location of objects | milestone | 0d | 2018-01-17 | 2018-01-17 | 34 |
| 36 | 3 | **Localisation/Navigation** |  | 8d | 2018-01-08 | 2018-01-16 |  |
| 37 | 3.1 | Make sure everything still works |  | 1d | 2018-01-08 | 2018-01-08 |  |
| 38 | 3.2 | Fix encoder |  | 3d | 2018-01-09 | 2018-01-11 | 37 |
| 39 | 3.3 | Evaluate current performance |  | 3d | 2018-01-12 | 2018-01-15 | 38 |
| 40 | 3.4 | Go to object identified by object mapper (potentially with variable goal accuracy) | milestone | 0d | 2018-01-17 | 2018-01-17 | 35, 37, 38, 61 |
| 41 | 4 | **Arm** |  | 22d | 2018-01-08 | 2018-02-01 |  |
| 42 | 4.1 | **Mounting arm on base** |  | 4d | 2018-01-29 | 2018-02-01 | 20 |
| 43 | 4.1.1 | Decide on mounting method for arm |  | 1d | 2018-01-29 | 2018-01-29 |  |
| 44 | 4.1.2 | Design arm mount |  | 1d | 2018-01-30 | 2018-01-30 | 43 |
| 45 | 4.1.3 | Build arm mount |  | 1d | 2018-01-31 | 2018-01-31 | 44 |
| 46 | 4.1.4 | Mount arm |  | 1d | 2018-02-01 | 2018-02-01 | 45 |
| 47 | 4.2 | **Mounting gripper on arm** |  | 4d | 2018-01-29 | 2018-02-01 |  |
| 48 | 4.2.1 | Design gripper to arm mount |  | 1d | 2018-01-29 | 2018-01-29 | 20 |
| 49 | 4.2.2 | Print gripper mount |  | 2d | 2018-01-30 | 2018-01-31 | 48 |
| 50 | 4.2.3 | Mount gripper on arm |  | 1d | 2018-02-01 | 2018-02-01 | 49 |

| ID | WBS | Task | Duration | Start | Finish | Predecessors |
| --- | --- | --- | --- | --- | --- | --- |
| 51 | 4.3 | **Control** | 20d | 2018-01-08 | 2018-01-30 |  |
| 52 | 4.3.1 | Learn how to control arm | 3d | 2018-01-08 | 2018-01-10 |  |
| 53 | 4.3.2 | **Control node** | 12d | 2018-01-17 | 2018-01-30 | 52 |
| 54 | 4.3.2.1 | Move gripper towards identified object | 4d | 2018-01-17 | 2018-01-20 | 35 |
| 55 | 4.3.2.2 | Pass control to hand cam when close | 2d | 2018-01-22 | 2018-01-23 | 29, 54 |
| 56 | 4.3.2.3 | Once hand cam node reports success, raise object and bring close to robot | 1d | 2018-01-24 | 2018-01-24 | 29, 55 |
| 57 | 4.3.2.4 | Testing | 5d | 2018-01-25 | 2018-01-30 | 54, 55, 56 |
| 58 | 5 | **System intergration** | 1d | 2018-01-08 | 2018-01-08 |  |
| 59 | 5.1 | task_11 | 1d | 2018-01-08 | 2018-01-08 |  |
| 60 | 6 | **Other software** | 5d | 2018-01-08 | 2018-01-12 |  |
| 61 | 6.1 | Write waypoint node | 5d | 2018-01-08 | 2018-01-12 |  |
