# Autonomous Mobile Manipulator

Schedule from GanttProject, 2018-01-31 to 2018-04-14, baseline: sss.
Holidays every year on 01-01, 12-25, 12-26

## Calendars

- Project calendar: Mon-Sat working; Sun off.

## Resources

| Resource |
| --- |
| Tom |
| Dan |
| PCB production by the university |
| Part ordering |
| 3d print |

## Schedule

| ID | WBS | Task | Type | Duration | Start | Finish | Predecessors | Baseline start | Baseline finish | Baseline duration | Resources |
| --- | --- | --- | --- | --- | --- | --- | --- | --- | --- | --- | --- |
| 1 | 1 | **Gripper** |  | 18d | 2018-02-01 | 2018-02-21 |  | 2018-02-01 | 2018-02-22 | 19d |  |
| 2 | 1.1 | Find suitable servos |  | 1d | 2018-02-01 | 2018-02-01 |  | 2018-02-01 | 2018-02-01 | 1d | Tom; Dan |
| 3 | 1.2 | **Mechanics** |  | 5d | 2018-02-07 | 2018-02-12 |  | 2018-02-07 | 2018-02-12 | 5d |  |
| 4 | 1.2.1 | **CAD** |  | 3d | 2018-02-07 | 2018-02-09 |  | 2018-02-07 | 2018-02-09 | 3d |  |
| 5 | 1.2.1.1 | Integrate LEDs |  | 1d | 2018-02-07 | 2018-02-07 |  | 2018-02-07 | 2018-02-07 | 1d | Dan |
| 6 | 1.2.1.2 | Integrate camera |  | 1d | 2018-02-07 | 2018-02-07 |  | 2018-02-07 | 2018-02-07 | 1d | Dan |
| 7 | 1.2.1.3 | Integrate PCB |  | 1d | 2018-02-07 | 2018-02-07 |  | 2018-02-07 | 2018-02-07 | 1d | Dan |
| 8 | 1.2.1.4 | Finish gripper CAD |  | 2d | 2018-02-08 | 2018-02-09 | 2, 5, 6, 7 | 2018-02-08 | 2018-02-09 | 2d | Dan |
| 9 | 1.2.2 | **CAM** |  | 2d | 2018-02-10 | 2018-02-12 |  | 2018-02-10 | 2018-02-12 | 2d |  |
| 10 | 1.2.2.1 | 3D print gripper |  | 2d | 2018-02-10 | 2018-02-12 | 8 | 2018-02-10 | 2018-02-12 | 2d | 3d print |
| 11 | 1.3 | **Electronics** |  | 16d | 2018-02-02 | 2018-02-20 |  | 2018-02-02 | 2018-02-21 | 17d |  |
| 12 | 1.3.1 | **Schematics** |  | 1d | 2018-02-02 | 2018-02-02 |  | 2018-02-02 | 2018-02-02 | 1d |  |
| 13 | 1.3.1.1 | LED driver and servo breakout |  | 1d | 2018-02-02 | 2018-02-02 |  | 2018-02-02 | 2018-02-02 | 1d | Tom |
| 14 | 1.3.2 | PCB layout |  | 1d | 2018-02-03 | 2018-02-03 | 12 | 2018-02-03 | 2018-02-03 | 1d | Tom |
| 15 | 1.3.3 | Get PCB made |  | 13d | 2018-02-05 | 2018-02-19 | 14 | 2018-02-05 | 2018-02-20 | 14d | PCB production by the university |
| 16 | 1.3.4 | Gripper PCB assembly |  | 1d | 2018-02-20 | 2018-02-20 | 15 | 2018-02-21 | 2018-02-21 | 1d | Tom |
| 17 | 1.4 | Assemble gripper |  | 1d | 2018-02-14 | 2018-02-14 | 10 | 2018-02-14 | 2018-02-14 | 1d | Dan |
| 18 | 1.5 | Gripper control software |  | 1d | 2018-02-10 | 2018-02-10 | 8 | 2018-02-10 | 2018-02-10 | 1d | Dan |
| 19 | 1.6 | Gripper testing |  | 1d | 2018-02-21 | 2018-02-21 | 3, 11, 17, 18 | 2018-02-22 | 2018-02-22 | 1d | Dan |
| 20 | 1.7 | Gripper Finished | milestone | 0d | 2018-02-22 | 2018-02-22 | 19 | 2018-02-23 | 2018-02-23 | 0d |  |
| 21 | 2 | **Vision** |  | 29d | 2018-01-31 | 2018-03-05 |  | 2018-01-31 | 2018-03-13 | 36d |  |
| 22 | 2.1 | Get data on QR codes distance vs resolution vs size |  | 1d | 2018-01-31 | 2018-01-31 |  | 2018-01-31 | 2018-01-31 | 1d | Tom; Dan |
| 23 | 2.2 | **Hand cam** |  | 11d | 2018-02-21 | 2018-03-05 |  | 2018-02-21 | 2018-03-05 | 11d |  |
| 24 | 2.2.1 | Choose/install fiducial localisation software (hand) |  | 1d | 2018-02-21 | 2018-02-21 | 22 | 2018-02-21 | 2018-02-21 | 1d | Tom; Dan |

| ID | WBS | Task | Type | Duration | Start | Finish | Predecessors | Baseline start | Baseline finish | Baseline duration | Resources |
| --- | --- | --- | --- | --- | --- | --- | --- | --- | --- | --- | --- |
| 25 | 2.2.2 | **Software development** |  | 9d | 2018-02-23 | 2018-03-05 | 24 | 2018-02-23 | 2018-03-05 | 9d |  |
| 26 | 2.2.2.1 | **Hand cam node** |  | 8d | 2018-02-23 | 2018-03-03 |  | 2018-02-23 | 2018-03-03 | 8d |  |
| 27 | 2.2.2.1.1 | Visual servoing and fiducial tracker |  | 8d | 2018-02-23 | 2018-03-03 |  | 2018-02-23 | 2018-03-03 | 8d | Dan |
| 28 | 2.2.2.1.2 | Gripper close trigger when gripper is in the right place |  | 2d | 2018-03-02 | 2018-03-03 | 27FF | 2018-03-02 | 2018-03-03 | 2d | Dan |
| 29 | 2.2.2.2 | Test visual servoing and gripper close (not on arm) |  | 1d | 2018-03-05 | 2018-03-05 | 26 | 2018-03-05 | 2018-03-05 | 1d | Dan |
| 30 | 2.3 | **Head cam** |  | 7d | 2018-02-24 | 2018-03-03 | 22FS+20d | 2018-02-24 | 2018-03-13 | 15d |  |
| 31 | 2.3.1 | Choose/install fiducial localisation software (head) |  | 1d | 2018-02-24 | 2018-02-24 | 22 | 2018-02-24 | 2018-02-24 | 1d | Tom; Dan |
| 32 | 2.3.2 | Develop fiducial system to detect object and point hand cam at it |  | 4d | 2018-02-28 | 2018-03-03 |  | 2018-03-07 | 2018-03-13 | 6d | Tom |
| 33 | 2.3.3 | Write node to recieve fiducial detected signal and pass location to waypoint node (Object mapper) |  | 1d | 2018-02-26 | 2018-02-26 | 31 | 2018-02-26 | 2018-02-26 | 1d | Tom |
| 34 | 2.3.4 | Test head cam identification and saving with waypoint node |  | 2d | 2018-02-27 | 2018-02-28 | 33, 58 | 2018-02-27 | 2018-02-28 | 2d | Tom |
| 35 | 2.3.5 | Headcam can identify, locate and save the location of objects | milestone | 0d | 2018-03-01 | 2018-03-01 | 34 | 2018-03-01 | 2018-03-01 | 0d |  |
| 36 | 3 | **Localisation/Navigation** |  | 20d | 2018-02-06 | 2018-02-28 |  | 2018-02-07 | 2018-02-28 | 19d |  |
| 37 | 3.1 | Make sure everything still works |  | 1d | 2018-02-06 | 2018-02-06 |  | 2018-02-07 | 2018-02-07 | 1d | Tom |
| 38 | 3.2 | Fix encoder |  | 3d | 2018-02-07 | 2018-02-09 | 37 | 2018-02-08 | 2018-02-10 | 3d | Tom |
| 39 | 3.3 | Evaluate current performance |  | 3d | 2018-02-10 | 2018-02-13 | 38 | 2018-02-12 | 2018-02-14 | 3d | Tom |
| 40 | 3.4 | Go to object identified by object mapper (potentially with variable goal accuracy) | milestone | 0d | 2018-03-01 | 2018-03-01 | 35, 37, 38, 58 | 2018-03-01 | 2018-03-01 | 0d |  |
| 41 | 4 | **Arm** |  | 34d | 2018-02-01 | 2018-03-12 |  | 2018-02-01 | 2018-03-26 | 46d |  |
| 42 | 4.1 | **Mounting arm on base** |  | 4d | 2018-02-01 | 2018-02-05 |  | 2018-02-01 | 2018-02-05 | 4d |  |
| 43 | 4.1.1 | Decide on mounting method for arm |  | 1d | 2018-02-01 | 2018-02-01 |  | 2018-02-01 | 2018-02-01 | 1d | Tom; Dan |
| 44 | 4.1.2 | Design arm mount |  | 1d | 2018-02-02 | 2018-02-02 | 43 | 2018-02-02 | 2018-02-02 | 1d | Dan |
| 45 | 4.1.3 | Build arm mount |  | 1d | 2018-02-03 | 2018-02-03 | 44 | 2018-02-03 | 2018-02-03 | 1d | Dan |
| 46 | 4.1.4 | Mount arm |  | 1d | 2018-02-05 | 2018-02-05 | 45 | 2018-02-05 | 2018-02-05 | 1d | Dan |
| 47 | 4.2 | **Mounting gripper on arm** |  | 10d | 2018-02-14 | 2018-02-24 |  | 2018-02-14 | 2018-02-24 | 10d |  |
| 48 | 4.2.1 | Design gripper to arm mount |  | 7d | 2018-02-14 | 2018-02-21 |  | 2018-02-14 | 2018-02-21 | 7d | Dan |
| 49 | 4.2.2 | Print gripper mount |  | 2d | 2018-02-22 | 2018-02-23 | 48 | 2018-02-22 | 2018-02-23 | 2d | 3d print |
| 50 | 4.2.3 | Mount gripper on arm |  | 1d | 2018-02-24 | 2018-02-24 | 49 | 2018-02-24 | 2018-02-24 | 1d | Dan |

| ID | WBS | Task | Duration | Start | Finish | Predecessors | Baseline start | Baseline finish | Baseline duration | Constraint | Resources |
| --- | --- | --- | --- | --- | --- | --- | --- | --- | --- | --- | --- |
| 51 | 4.3 | **Control** | 9d | 2018-03-02 | 2018-03-12 |  | 2018-03-01 | 2018-03-26 | 22d |  |  |
| 52 | 4.3.1 | Learn how to control arm | 3d | 2018-03-02 | 2018-03-05 |  | 2018-03-01 | 2018-03-05 | 4d |  | Tom |
| 53 | 4.3.2 | **Control node** | 7d | 2018-03-05 | 2018-03-12 |  | 2018-03-13 | 2018-03-26 | 12d |  |  |
| 54 | 4.3.2.1 | Move gripper towards identified object | 4d | 2018-03-05 | 2018-03-08 | 30 | 2018-03-13 | 2018-03-16 | 4d |  | Tom |
| 55 | 4.3.2.2 | Pass control to hand cam when close | 2d | 2018-03-09 | 2018-03-10 | 29, 54 | 2018-03-17 | 2018-03-19 | 2d |  | Tom |
| 56 | 4.3.2.3 | Once hand cam node reports success, raise object and bring close to robot | 1d | 2018-03-12 | 2018-03-12 | 29, 55 | 2018-03-20 | 2018-03-20 | 1d |  | Tom |
| 57 | 5 | **Other software** | 4d | 2018-02-15 | 2018-02-19 |  | 2018-02-15 | 2018-02-19 | 4d |  |  |
| 58 | 5.1 | Write waypoint node | 4d | 2018-02-15 | 2018-02-19 |  | 2018-02-15 | 2018-02-19 | 4d |  | Tom |
| 59 | 6 | **Systems integration testing** | 35d | 2018-03-06 | 2018-04-14 |  | 2018-03-06 | 2018-04-21 | 41d |  |  |
| 60 | 6.1 | Test base identifying and moving towards objects | 7d | 2018-03-06 | 2018-03-13 | 36 | 2018-03-06 | 2018-03-13 | 7d | start no earlier than 2018-03-06 | Dan |
| 61 | 6.2 | Test base picking up objects | 15d | 2018-03-13 | 2018-03-29 | 21, 41 | 2018-03-21 | 2018-04-05 | 14d |  | Tom; Dan |
| 62 | 6.3 | Test base returning to previously saved waypoint | 6d | 2018-03-14 | 2018-03-20 |  | 2018-03-14 | 2018-03-20 | 6d |  | Dan |
| 63 | 6.4 | Testing of entire system | 14d | 2018-03-30 | 2018-04-14 | 60, 61, 62 | 2018-04-06 | 2018-04-21 | 14d |  |  |
