# Autonomous Mobile Manipulator

Schedule from GanttProject, 2018-02-01 to 2018-04-20.
Holidays every year on 01-01, 12-25, 12-26

## Calendars

- Project calendar: Mon-Sat working; Sun off.

## Resources

| Resource |
| --- |
| Tom |
| Dan |

## Schedule

| ID | WBS | Task | Type | Duration | Start | Finish | Predecessors | Resources |
| --- | --- | --- | --- | --- | --- | --- | --- | --- |
| 1 | 1 | **Gripper** |  | 38d | 2018-02-01 | 2018-03-16 |  |  |
| 2 | 1.1 | Find suitable servos |  | 1d | 2018-02-02 | 2018-02-02 | 22 | Tom; Dan |
| 3 | 1.2 | **Mechanics** |  | 6d | 2018-02-01 | 2018-02-07 |  | Dan |
| 4 | 1.2.1 | **CAD** |  | 4d | 2018-02-01 | 2018-02-05 |  |  |
| 5 | 1.2.1.1 | Integrate camera |  | 1d | 2018-02-01 | 2018-02-01 |  |  |
| 6 | 1.2.1.2 | Integrate LEDs |  | 1d | 2018-02-01 | 2018-02-01 |  |  |
| 7 | 1.2.1.3 | Integrate PCB |  | 1d | 2018-02-01 | 2018-02-01 |  |  |
| 8 | 1.2.1.4 | Finish gripper CAD |  | 2d | 2018-02-03 | 2018-02-05 | 2, 5, 6, 7 |  |
| 9 | 1.2.2 | **CAM** |  | 2d | 2018-02-06 | 2018-02-07 |  |  |
| 10 | 1.2.2.1 | 3D print gripper |  | 2d | 2018-02-06 | 2018-02-07 | 8 |  |
| 11 | 1.3 | **Electronics** |  | 17d | 2018-02-24 | 2018-03-15 | 35 | Tom |
| 12 | 1.3.1 | **Schematics** |  | 1d | 2018-02-24 | 2018-02-24 |  |  |
| 13 | 1.3.1.1 | LED driver and servo breakout |  | 1d | 2018-02-24 | 2018-02-24 |  |  |
| 14 | 1.3.2 | PCB layout |  | 1d | 2018-02-26 | 2018-02-26 | 12 |  |
| 15 | 1.3.3 | Get PCB made |  | 14d | 2018-02-27 | 2018-03-14 | 14 |  |
| 16 | 1.3.4 | Gripper PCB assembly |  | 1d | 2018-03-15 | 2018-03-15 | 15 |  |
| 17 | 1.4 | Assemble gripper |  | 1d | 2018-02-08 | 2018-02-08 | 10 | Dan |
| 18 | 1.5 | Gripper control software |  | 1d | 2018-02-06 | 2018-02-06 | 8 | Dan |
| 19 | 1.6 | Gripper testing |  | 1d | 2018-03-16 | 2018-03-16 | 3, 11, 17, 18 | Dan |
| 20 | 1.7 | Gripper Finished | milestone | 0d | 2018-03-17 | 2018-03-17 | 19 |  |
| 21 | 2 | **Vision** |  | 20d | 2018-02-01 | 2018-02-23 |  |  |
| 22 | 2.1 | Get data on QR codes distance vs resolution vs size |  | 1d | 2018-02-01 | 2018-02-01 |  | Tom; Dan |
| 23 | 2.2 | **Hand cam** |  | 9d | 2018-02-10 | 2018-02-20 |  |  |
| 24 | 2.2.1 | Choose/install fiducial localisation software (hand) |  | 2d | 2018-02-10 | 2018-02-12 | 22, 38 | Tom; Dan |

| ID | WBS | Task | Type | Duration | Start | Finish | Predecessors | Resources |
| --- | --- | --- | --- | --- | --- | --- | --- | --- |
| 25 | 2.2.2 | **Software development** |  | 7d | 2018-02-13 | 2018-02-20 | 24 | Dan |
| 26 | 2.2.2.1 | **Hand cam node** |  | 6d | 2018-02-13 | 2018-02-19 |  |  |
| 27 | 2.2.2.1.1 | Visual servoing |  | 5d | 2018-02-13 | 2018-02-17 | 22 |  |
| 28 | 2.2.2.1.2 | Gripper close trigger when gripper is in the right place |  | 1d | 2018-02-19 | 2018-02-19 | 24, 27 |  |
| 29 | 2.2.2.2 | Test visual servoing and gripper close (not on arm) |  | 1d | 2018-02-20 | 2018-02-20 | 26 |  |
| 30 | 2.3 | **Head cam** |  | 10d | 2018-02-13 | 2018-02-23 |  |  |
| 31 | 2.3.1 | Choose/install fiducial localisation software (head) |  | 2d | 2018-02-13 | 2018-02-14 | 24, 38 | Tom; Dan |
| 32 | 2.3.2 | Write node to recieve fiducial detected signal and pass location to waypoint node (Object mapper) |  | 1d | 2018-02-15 | 2018-02-15 | 31 | Tom |
| 33 | 2.3.3 | Test head cam identification and saving with waypoint node |  | 2d | 2018-02-22 | 2018-02-23 | 32, 38, 62 | Tom |
| 34 | 2.3.4 | Headcam can identify, locate and save the location of objects | milestone | 0d | 2018-02-24 | 2018-02-24 | 33 |  |
| 35 | 3 | **Localisation/Navigation** |  | 17d | 2018-02-02 | 2018-02-21 | 22 | Tom |
| 36 | 3.1 | Make sure everything still works |  | 1d | 2018-02-02 | 2018-02-02 | 22 |  |
| 37 | 3.2 | Fix encoder |  | 3d | 2018-02-03 | 2018-02-06 | 36 |  |
| 38 | 3.3 | Evaluate current performance |  | 3d | 2018-02-07 | 2018-02-09 | 37 |  |
| 39 | 3.4 | Go to object identified | milestone | 0d | 2018-02-22 | 2018-02-22 | 36, 37, 62 |  |
| 40 | 4 | **Arm** |  | 42d | 2018-02-01 | 2018-03-21 |  |  |
| 41 | 4.1 | **Mounting arm on base** |  | 4d | 2018-03-17 | 2018-03-21 | 20 |  |
| 42 | 4.1.1 | Decide on mounting method for arm |  | 1d | 2018-03-17 | 2018-03-17 |  | Tom; Dan |
| 43 | 4.1.2 | Design arm mount |  | 1d | 2018-03-19 | 2018-03-19 | 42 | Dan |
| 44 | 4.1.3 | Build arm mount |  | 1d | 2018-03-20 | 2018-03-20 | 43 | Dan |
| 45 | 4.1.4 | Mount arm |  | 1d | 2018-03-21 | 2018-03-21 | 44 | Dan |
| 46 | 4.2 | **Mounting gripper on arm** |  | 4d | 2018-03-17 | 2018-03-21 |  | Dan |
| 47 | 4.2.1 | Design gripper to arm mount |  | 1d | 2018-03-17 | 2018-03-17 | 20 |  |
| 48 | 4.2.2 | Print gripper mount |  | 2d | 2018-03-19 | 2018-03-20 | 47 |  |
| 49 | 4.2.3 | Mount gripper on arm |  | 1d | 2018-03-21 | 2018-03-21 | 48 |  |

| ID | WBS | Task | Type | Duration | Start | Finish | Predecessors | Resources |
| --- | --- | --- | --- | --- | --- | --- | --- | --- |
| 50 | 4.3 | **Control** |  | 32d | 2018-02-01 | 2018-03-09 |  |  |
| 51 | 4.3.1 | Learn how to control arm |  | 3d | 2018-02-01 | 2018-02-03 |  | Tom; Dan |
| 52 | 4.3.2 | **Control node** |  | 12d | 2018-02-24 | 2018-03-09 | 51 |  |
| 53 | 4.3.2.1 | Move gripper towards identified object |  | 4d | 2018-02-24 | 2018-02-28 | 34 |  |
| 54 | 4.3.2.2 | Pass control to hand cam when close |  | 2d | 2018-03-01 | 2018-03-02 | 29, 53 |  |
| 55 | 4.3.2.3 | Once hand cam node reports success, raise object and bring close to robot |  | 1d | 2018-03-03 | 2018-03-03 | 29, 54 |  |
| 56 | 4.3.2.4 | Testing |  | 5d | 2018-03-05 | 2018-03-09 | 53, 54, 55 |  |
| 57 | 5 | **System intergration** |  | 38d | 2018-02-22 | 2018-04-06 |  |  |
| 58 | 5.1 | Testing get to object |  | 7d | 2018-02-24 | 2018-03-03 | 21, 35 |  |
| 59 | 5.2 | Testing pick up object sequence |  | 14d | 2018-03-22 | 2018-04-06 | 1, 21, 40 |  |
| 60 | 5.3 | Testing return home sequence |  | 5d | 2018-02-22 | 2018-02-27 | 35, 62 |  |
| 61 | 6 | **Other software** |  | 5d | 2018-02-16 | 2018-02-21 |  |  |
| 62 | 6.1 | Write waypoint node |  | 5d | 2018-02-16 | 2018-02-21 | 32, 38 | Tom |
| 63 | 7 | Final hardware due date (estimate) | milestone | 0d | 2018-04-20 | 2018-04-20 |  |  |
