# Autonomous Mobile Manipulator

Schedule from GanttProject, 2018-01-08 to 2018-02-19.
Holidays every year on 01-01, 12-25, 12-26

## Calendars

- Project calendar: Mon-Sat working; Sun off.

## Resources

| Resource |
| --- |
| Tom |
| Dan |
| PCB production by the university |
| Part ordering |
| 3d print |

## Schedule

| ID | WBS | Task | Type | Duration | Start | Finish | Predecessors | Resources |
| --- | --- | --- | --- | --- | --- | --- | --- | --- |
| 1 | 1 | **Gripper** |  | 19d | 2018-01-09 | 2018-01-30 |  |  |
| 2 | 1.1 | Find suitable servos |  | 1d | 2018-01-09 | 2018-01-09 |  | Tom; Dan |
| 3 | 1.2 | **Mechanics** |  | 5d | 2018-01-15 | 2018-01-19 |  |  |
| 4 | 1.2.1 | **CAD** |  | 3d | 2018-01-15 | 2018-01-17 |  |  |
| 5 | 1.2.1.1 | Integrate LEDs |  | 1d | 2018-01-15 | 2018-01-15 |  | Dan |
| 6 | 1.2.1.2 | Integrate camera |  | 1d | 2018-01-15 | 2018-01-15 |  | Dan |
| 7 | 1.2.1.3 | Integrate PCB |  | 1d | 2018-01-15 | 2018-01-15 |  | Dan |
| 8 | 1.2.1.4 | Finish gripper CAD |  | 2d | 2018-01-16 | 2018-01-17 | 2, 5, 6, 7 | Dan |
| 9 | 1.2.2 | **CAM** |  | 2d | 2018-01-18 | 2018-01-19 |  |  |
| 10 | 1.2.2.1 | 3D print gripper |  | 2d | 2018-01-18 | 2018-01-19 | 8 | 3d print |
| 11 | 1.3 | **Electronics** |  | 17d | 2018-01-10 | 2018-01-29 |  |  |
| 12 | 1.3.1 | **Schematics** |  | 1d | 2018-01-10 | 2018-01-10 |  |  |
| 13 | 1.3.1.1 | LED driver and servo breakout |  | 1d | 2018-01-10 | 2018-01-10 |  | Tom |
| 14 | 1.3.2 | PCB layout |  | 1d | 2018-01-11 | 2018-01-11 | 12 | Tom |
| 15 | 1.3.3 | Get PCB made |  | 14d | 2018-01-12 | 2018-01-27 | 14 | PCB production by the university |
| 16 | 1.3.4 | Gripper PCB assembly |  | 1d | 2018-01-29 | 2018-01-29 | 15 | Tom |
| 17 | 1.4 | Assemble gripper |  | 1d | 2018-01-22 | 2018-01-22 | 10 | Dan |
| 18 | 1.5 | Gripper control software |  | 1d | 2018-01-18 | 2018-01-18 | 8 | Dan |
| 19 | 1.6 | Gripper testing |  | 1d | 2018-01-30 | 2018-01-30 | 3, 11, 17, 18 | Dan |
| 20 | 1.7 | Gripper Finished | milestone | 0d | 2018-01-31 | 2018-01-31 | 19 |  |
| 21 | 2 | **Vision** |  | 36d | 2018-01-08 | 2018-02-17 |  |  |
| 22 | 2.1 | Get data on QR codes distance vs resolution vs size |  | 1d | 2018-01-08 | 2018-01-08 |  | Tom; Dan |
| 23 | 2.2 | **Hand cam** |  | 11d | 2018-01-29 | 2018-02-09 |  |  |
| 24 | 2.2.1 | Choose/install fiducial localisation software (hand) |  | 1d | 2018-01-29 | 2018-01-29 | 22 | Tom; Dan |

| ID | WBS | Task | Type | Duration | Start | Finish | Predecessors | Resources |
| --- | --- | --- | --- | --- | --- | --- | --- | --- |
| 25 | 2.2.2 | **Software development** |  | 9d | 2018-01-31 | 2018-02-09 | 24 |  |
| 26 | 2.2.2.1 | **Hand cam node** |  | 8d | 2018-01-31 | 2018-02-08 |  |  |
| 27 | 2.2.2.1.1 | Visual servoing and fiducial tracker |  | 8d | 2018-01-31 | 2018-02-08 |  | Dan |
| 28 | 2.2.2.1.2 | Gripper close trigger when gripper is in the right place |  | 2d | 2018-02-07 | 2018-02-08 | 27FF | Dan |
| 29 | 2.2.2.2 | Test visual servoing and gripper close (not on arm) |  | 1d | 2018-02-09 | 2018-02-09 | 26 | Dan |
| 30 | 2.3 | **Head cam** |  | 15d | 2018-02-01 | 2018-02-17 |  |  |
| 31 | 2.3.1 | Choose/install fiducial localisation software (head) |  | 1d | 2018-02-01 | 2018-02-01 |  | Tom; Dan |
| 32 | 2.3.2 | Develop fiducial system to detect object and point hand cam at it |  | 6d | 2018-02-12 | 2018-02-17 |  | Tom |
| 33 | 2.3.3 | Write node to recieve fiducial detected signal and pass location to waypoint node (Object mapper) |  | 1d | 2018-02-02 | 2018-02-02 | 31 | Tom |
| 34 | 2.3.4 | Test head cam identification and saving with waypoint node |  | 2d | 2018-02-03 | 2018-02-05 | 33, 61 | Tom |
| 35 | 2.3.5 | Headcam can identify, locate and save the location of objects | milestone | 0d | 2018-02-06 | 2018-02-06 | 34 |  |
| 36 | 3 | **Localisation/Navigation** |  | 19d | 2018-01-15 | 2018-02-05 |  |  |
| 37 | 3.1 | Make sure everything still works |  | 1d | 2018-01-15 | 2018-01-15 |  | Tom |
| 38 | 3.2 | Fix encoder |  | 3d | 2018-01-16 | 2018-01-18 | 37 | Tom |
| 39 | 3.3 | Evaluate current performance |  | 3d | 2018-01-19 | 2018-01-22 | 38 | Tom |
| 40 | 3.4 | Go to object identified by object mapper (potentially with variable goal accuracy) | milestone | 0d | 2018-02-06 | 2018-02-06 | 35, 37, 38, 61 |  |
| 41 | 4 | **Arm** |  | 36d | 2018-01-09 | 2018-02-19 |  |  |
| 42 | 4.1 | **Mounting arm on base** |  | 4d | 2018-01-09 | 2018-01-12 |  |  |
| 43 | 4.1.1 | Decide on mounting method for arm |  | 1d | 2018-01-09 | 2018-01-09 |  | Tom; Dan |
| 44 | 4.1.2 | Design arm mount |  | 1d | 2018-01-10 | 2018-01-10 | 43 | Dan |
| 45 | 4.1.3 | Build arm mount |  | 1d | 2018-01-11 | 2018-01-11 | 44 | Dan |
| 46 | 4.1.4 | Mount arm |  | 1d | 2018-01-12 | 2018-01-12 | 45 | Dan |
| 47 | 4.2 | **Mounting gripper on arm** |  | 10d | 2018-01-22 | 2018-02-01 |  |  |
| 48 | 4.2.1 | Design gripper to arm mount |  | 7d | 2018-01-22 | 2018-01-29 |  | Dan |
| 49 | 4.2.2 | Print gripper mount |  | 2d | 2018-01-30 | 2018-01-31 | 48 | 3d print |
| 50 | 4.2.3 | Mount gripper on arm |  | 1d | 2018-02-01 | 2018-02-01 | 49 | Dan |

| ID | WBS | Task | Duration | Start | Finish | Predecessors | Resources |
| --- | --- | --- | --- | --- | --- | --- | --- |
| 51 | 4.3 | **Control** | 12d | 2018-02-06 | 2018-02-19 |  |  |
| 52 | 4.3.1 | Learn how to control arm | 4d | 2018-02-06 | 2018-02-09 |  | Tom |
| 53 | 4.3.2 | **Control node** | 12d | 2018-02-06 | 2018-02-19 |  |  |
| 54 | 4.3.2.1 | Move gripper towards identified object | 4d | 2018-02-06 | 2018-02-09 | 35 |  |
| 55 | 4.3.2.2 | Pass control to hand cam when close | 2d | 2018-02-10 | 2018-02-12 | 29, 54 |  |
| 56 | 4.3.2.3 | Once hand cam node reports success, raise object and bring close to robot | 1d | 2018-02-13 | 2018-02-13 | 29, 55 |  |
| 57 | 4.3.2.4 | Testing | 5d | 2018-02-14 | 2018-02-19 | 54, 55, 56 |  |
| 58 | 5 | **System intergration** | 1d | 2018-01-08 | 2018-01-08 |  |  |
| 59 | 5.1 | task_11 | 1d | 2018-01-08 | 2018-01-08 |  |  |
| 60 | 6 | **Other software** | 4d | 2018-01-23 | 2018-01-26 |  |  |
| 61 | 6.1 | Write waypoint node | 4d | 2018-01-23 | 2018-01-26 |  | Tom |
